# Brot-IT_Projekt_MGMT

Schedule from MS Project, 2023-04-24 to 2023-07-28, costs in CHF.

## Calendars

- Standard: Mon-Fri 08:00-12:00, 13:00-17:00; Sat-Sun off. Exceptions (off unless hours are given): 2023-04-29 to 2023-05-01 (Datensicherung), 2023-05-02 08:00-12:00, 13:00-17:00.

## Resources

| Resource | Group | Unit | Rate |
| --- | --- | --- | --- |
| Hr. Morgenthaler | Projektleitung |  | 100 |
| Hr. Schweingurber | Stv. Projektleitung |  | 100 |
| Hr. Muster | Netzwerk |  | 100 |
| Fr. Müller | Netzwerk |  | 100 |
| Hr. Dinsbums | Netzwerk |  | 100 |
| Hr. Beispiel | Server |  | 100 |
| Fr. Zigzachs | Server |  | 100 |
| Fr. Baum | Server |  | 100 |
| Fr. Stöckli | Datenverwaltung |  | 100 |
| Hr. Leim | Datenverwaltung |  | 100 |
| Hr. Limbo | Datenverwaltung |  | 100 |
| SAN |  | HPE SN6010C Fibrechannel Switch | 3667 |
| Blade Server |  | HPE Blade Server | 150000 |
| NAS |  | Synology DS1522+ | 1295 |
| Firewall |  | Zyxel USG Flex 200 | 668 |
| LWL |  | Lightwin LWL | 30 |
| RJ45 |  | Lindy Netzwerkkabel Cat7 | 45 |
| Ubuntu |  | Lizenzen | 3400 |
| vSphere |  | Lizenzen | 2022 |
| Switch |  | Ubiquiti UniFi Switch Pro 24 PoE | 667 |

## Schedule

| ID | WBS | Task | Type | Duration | Start | Finish | Predecessors | Total slack | Free slack | Constraint | Resources | Work | Cost |
| --- | --- | --- | --- | --- | --- | --- | --- | --- | --- | --- | --- | --- | --- |
| 1 | 1 | **Neuaufbau Serverumgebung** |  | 68d? | 2023-04-24 | 2023-07-28 |  | 0d |  |  |  | 1138h | 267,196 |
| 2 | 1.1 | **Daten** |  | 41d? | 2023-04-26 | 2023-06-22 |  | 6d |  |  |  | 128h | 12,800 |
| 3 | 1.1.1 | **Sicherung** |  | 4d? | 2023-04-26 | 2023-05-02 |  | 13d |  |  |  | 80h | 8,000 |
| 4 | 1.1.1.1 | Datenauswahl |  | 2d? | 2023-04-26 | 2023-04-27 | 35 | 13d | 0d | finish no earlier than 2023-04-27 | Fr. Stöckli; Hr. Leim; Hr. Limbo | 48h | 4,800 |
| 5 | 1.1.1.2 | Datensicherung |  | 2d? | 2023-04-28 | 2023-05-02 | 4 | 13d | 0d | start no earlier than 2023-04-28 | Fr. Stöckli; Hr. Leim; Hr. Limbo | 32h | 3,200 |
| 6 | 1.1.2 | **Migration** |  | 2d? | 2023-06-21 | 2023-06-22 |  | 6d |  |  |  | 48h | 4,800 |
| 7 | 1.1.2.1 | Daten einspielen |  | 1d? | 2023-06-21 | 2023-06-21 | 31 | 6d | 0d | start no earlier than 2023-06-21 | Fr. Stöckli; Hr. Leim; Hr. Limbo | 24h | 2,400 |
| 8 | 1.1.2.2 | Daten Prüfen |  | 1d? | 2023-06-22 | 2023-06-22 | 7 | 6d | 0d | start no earlier than 2023-06-22 | Fr. Stöckli; Hr. Leim; Hr. Limbo | 24h | 2,400 |
| 9 | 1.1.2.3 | Fertigstellung der Daten | milestone | 0d | 2023-06-22 | 2023-06-22 | 8 | 6d | 0d |  |  |  |  |
| 10 | 1.2 | **Netzwerk** |  | 42.5d? | 2023-05-03 | 2023-06-30 |  | 13d |  |  |  | 264h | 39,254 |
| 11 | 1.2.1 | **Einbau** |  | 19d? | 2023-05-03 | 2023-05-30 |  | 7d |  |  | Firewall [2 Zyxel USG Flex 200]; LWL [20 Lightwin LWL]; SAN [2 HPE SN6010C Fibrechannel Switch]; RJ45 [50 Lindy Netzwerkkabel Cat7]; Switch [2 Ubiquiti UniFi Switch Pro 24 PoE] | 192h | 32,054 |
| 12 | 1.2.1.1 | Fertigstellung neues Netzwerk | milestone | 0d | 2023-05-30 | 2023-05-30 | 13, 14, 15, 16, 17 | 7d | 1d | start no earlier than 2023-05-30 |  |  |  |
| 13 | 1.2.1.2 | Switchkonfiguration |  | 5d? | 2023-05-22 | 2023-05-26 | 16 | 8d | 1d | finish no earlier than 2023-05-26 | Fr. Müller | 40h | 4,000 |
| 14 | 1.2.1.3 | Firewallkonfiguration |  | 2d | 2023-05-22 | 2023-05-23 | 16 | 11d | 4d | start no earlier than 2023-05-22 | Hr. Dinsbums | 16h | 1,600 |
| 15 | 1.2.1.4 | Neue Geräte einbauen |  | 3d? | 2023-05-03 | 2023-05-05 | 5 | 13d | 0d | start no earlier than 2023-05-03 | Fr. Müller; Hr. Dinsbums; Hr. Muster | 40h | 4,000 |
| 16 | 1.2.1.5 | Kabel verlegen |  | 5d | 2023-05-08 | 2023-05-12 | 15 | 13d | 5d | start no earlier than 2023-05-08 | Fr. Müller; Hr. Dinsbums; Hr. Muster | 56h | 5,600 |
| 17 | 1.2.1.6 | Patchen |  | 5d | 2023-05-22 | 2023-05-26 | 16 | 8d | 1d | finish no earlier than 2023-05-26 | Hr. Muster | 40h | 4,000 |
| 18 | 1.2.2 | **Ausbau** |  | 3.5d | 2023-06-27 | 2023-06-30 |  | 19.5d | 2.5d |  |  | 72h | 7,200 |
| 19 | 1.2.2.1 | Alte Geräte ausbauen |  | 3.5d | 2023-06-27 | 2023-06-30 | 34 | 19.5d | 2.5d | start no earlier than 2023-06-19 | Fr. Müller [50%]; Hr. Dinsbums [50%]; Hr. Muster [50%] | 42h | 4,200 |
| 20 | 1.2.2.2 | Alte Kabel entfernen |  | 3.5d | 2023-06-27 | 2023-06-30 | 34 | 19.5d | 2.5d | start no earlier than 2023-06-19 | Fr. Müller [50%]; Hr. Dinsbums [50%]; Hr. Muster [50%] | 30h | 3,000 |
| 21 | 1.3 | **Server** |  | 24.5d? | 2023-05-29 | 2023-06-30 |  | 6d |  |  | NAS [1 Synology DS1522+]; Ubuntu [1 Lizenzen]; vSphere [1 Lizenzen]; Blade Server [1 HPE Blade Server]; LWL [10 Lightwin LWL]; RJ45 [25 Lindy Netzwerkkabel Cat7] | 482h | 188,742 |
| 22 | 1.3.1 | **Ausbau** |  | 3.5d | 2023-06-27 | 2023-06-30 |  | 19.5d | 2.5d |  |  | 74h | 7,400 |
| 23 | 1.3.1.1 | Kabel entfernen |  | 3.5d | 2023-06-27 | 2023-06-30 | 34 | 19.5d | 2.5d | start no earlier than 2023-06-19 | Fr. Baum [30%]; Fr. Zigzachs [30%]; Hr. Beispiel [30%] | 25.2h | 2,520 |
| 24 | 1.3.1.2 | Server ausbauen |  | 3.5d | 2023-06-27 | 2023-06-30 | 34 | 19.5d | 2.5d | start no earlier than 2023-06-19 | Fr. Baum [30%]; Fr. Zigzachs [30%]; Hr. Beispiel [30%] | 24.4h | 2,440 |
| 25 | 1.3.1.3 | Festplatten entfernen |  | 3.5d | 2023-06-27 | 2023-06-30 | 34 | 19.5d | 2.5d | start no earlier than 2023-06-19 | Fr. Baum [30%]; Fr. Zigzachs [30%]; Hr. Beispiel [30%] | 24.4h | 2,440 |

| ID | WBS | Task | Type | Duration | Start | Finish | Predecessors | Total slack | Free slack | Constraint | Resources | Work | Cost |
| --- | --- | --- | --- | --- | --- | --- | --- | --- | --- | --- | --- | --- | --- |
| 26 | 1.3.2 | **Einbau** |  | 17d? | 2023-05-29 | 2023-06-20 |  | 6d |  |  |  | 408h | 23,200 |
| 27 | 1.3.2.1 | Server einbauen |  | 2d? | 2023-05-29 | 2023-05-30 | 35 | 6d | 0d | finish no earlier than 2023-05-30 | Fr. Baum; Fr. Zigzachs; Hr. Beispiel | 48h | 4,800 |
| 28 | 1.3.2.2 | Kabel ziehen |  | 2d? | 2023-05-31 | 2023-06-01 | 27, 12 | 6d | 0d | finish no earlier than 2023-05-30 | Fr. Baum; Fr. Zigzachs; Hr. Beispiel | 48h | 3,200 |
| 29 | 1.3.2.3 | Patchen |  | 3d? | 2023-06-02 | 2023-06-06 | 28 | 6d | 0d | start no earlier than 2023-05-31 | Fr. Baum; Fr. Zigzachs; Hr. Beispiel | 72h | 4,000 |
| 30 | 1.3.2.4 | Installieren |  | 5d? | 2023-06-07 | 2023-06-13 | 29 | 6d | 0d | start no earlier than 2023-06-05 | Fr. Baum; Fr. Zigzachs; Hr. Beispiel | 120h | 5,600 |
| 31 | 1.3.2.5 | Konfigurieren |  | 5d? | 2023-06-14 | 2023-06-20 | 30 | 6d | 0d | finish no earlier than 2023-06-16 | Fr. Baum; Fr. Zigzachs; Hr. Beispiel | 120h | 5,600 |
| 32 | 1.3.2.6 | Fertigstellung Serverumgebung | milestone | 0d | 2023-06-20 | 2023-06-20 | 31 | 27d |  |  |  |  |  |
| 33 | 1.4 | **Organisation** |  | 68d? | 2023-04-24 | 2023-07-28 |  | 0d |  |  |  | 264h | 26,400 |
| 34 | 1.4.1 | Testen |  | 2d | 2023-06-23 | 2023-06-26 | 31, 9 | 6d | 0d | start no earlier than 2023-06-21 | Fr. Baum; Fr. Müller; Fr. Stöckli; Fr. Zigzachs; Hr. Beispiel; Hr. Dinsbums; Hr. Leim; Hr. Limbo; Hr. Morgenthaler; Hr. Muster; Hr. Schweingurber | 176h | 17,600 |
| 35 | 1.4.2 | Kickoffmeeting |  | 1d? | 2023-04-24 | 2023-04-24 |  | 14d | 1d | start no earlier than 2023-04-24 | Fr. Baum; Fr. Müller; Fr. Stöckli; Fr. Zigzachs; Hr. Beispiel; Hr. Dinsbums; Hr. Leim; Hr. Limbo; Hr. Morgenthaler; Hr. Muster; Hr. Schweingurber | 88h | 8,800 |
| 36 | 1.4.3 | Fertigstellung vom Ausbau | milestone | 0d | 2023-07-04 | 2023-07-04 | 18, 19, 20, 22, 23, 24, 25 | 17d |  | finish no earlier than 2023-07-04 |  |  |  |
| 37 | 1.4.4 | Übergabe |  | 17d? | 2023-07-04 | 2023-07-26 | 34 | 1d |  | start no earlier than 2023-07-04 |  |  |  |
| 38 | 1.4.5 | Ende | milestone | 0d | 2023-07-28 | 2023-07-28 | 19, 20, 23, 24, 25 | 0d |  | start no earlier than 2023-07-28 |  |  |  |
